# Projeto EzMart

Schedule from MS Project, 2018-02-19 to 2018-11-10, status date 2017-02-01, A marks actual dates.

## Calendars

- Standard: Mon-Fri 08:00-12:00, 13:00-17:00; Sat-Sun off. Exceptions (off unless hours are given): 2018-04-07 08:00-12:00, 13:00-17:00, 2018-05-12 08:00-12:00, 13:00-17:00, 2018-06-30 08:00-12:00, 13:00-17:00, 2018-09-08 08:00-12:00, 13:00-17:00, 2018-11-10 08:00-12:00, 13:00-17:00.

## Resources

| Resource |
| --- |
| Camila |
| Diego |
| Jéssica |
| Marcos H |
| Marcos P |

## Schedule

| ID | WBS | Task | Duration | Start | Finish | Predecessors | Complete | Remaining | Actual start | Baseline start | Baseline finish | Baseline duration | Baseline 1 start | Baseline 1 finish | Total slack | Free slack | Constraint | Resources | Work | Actual work | Critical? | Text3 |
| --- | --- | --- | --- | --- | --- | --- | --- | --- | --- | --- | --- | --- | --- | --- | --- | --- | --- | --- | --- | --- | --- | --- |
| 1 | FAI-PFC-14 | **FASE 1** | 35d | 2018-02-19 A | 2018-04-07 |  | 67% | 11.62d |  | 2018-09-08 | 2018-11-10 | 47d | 2014-03-03 | 2014-04-09 |  |  |  |  | 356.11h | 250.11h |  |  |
| 2 | FAI-PFC-14.16 | **Comunicação** | 15d | 2018-02-19 A | 2018-03-09 |  | 30% | 10.48d |  | 2018-02-23 | 2018-03-08 | 9d | 2014-03-03 | 2014-03-13 |  |  |  |  | 64.11h | 20.11h |  |  |
| 3 | FAI-PFC-14.16.4 | **Requisitos Funcionais** | 11d | 2018-02-19 | 2018-03-06 A |  | 100% |  | 2018-03-03 | 2018-02-23 | 2018-02-28 | 3d | 2014-03-03 | 2014-03-05 |  |  |  |  | 17.11h | 17.11h |  |  |
| 4 | FAI-PFC-14.16.4.4 | **Elaborar Requisitos Funcionais** | 1d | 2018-03-03 A | 2018-03-05 A |  | 100% |  |  | 2018-02-23 | 2018-02-26 | 1d | 2014-03-03 | 2014-03-04 |  |  |  | Marcos H | 16.11h | 16.11h | Não | Não |
| 5 | FAI-PFC-14.16.4.4.1 | Revisar Requisitos Funcionais | 1d | 2018-03-03 A | 2018-03-05 A |  | 100% |  |  | 2018-02-26 | 2018-02-27 | 1d | 2014-03-04 | 2014-03-04 |  |  | start no earlier than 2018-03-01 | Marcos H | 8h | 8h | Sim | Sim |
| 6 | FAI-PFC-14.16.4.6 | Alterar Requisitos Funcionais | 1d | 2018-03-05 A | 2018-03-06 A | 5 | 100% |  |  | 2018-02-27 | 2018-02-28 | 1d | 2014-03-05 | 2014-03-05 |  |  |  | Marcos H | 1h | 1h | Sim | Sim |
| 7 | FAI-PFC-14.16.5 | **Requisitos Não Funcionais** | 6d | 2018-02-19 A | 2018-02-26 |  | 6% | 5.62d |  | 2018-02-28 | 2018-03-05 | 3d | 2014-03-06 | 2014-03-10 |  |  |  |  | 47h | 3h |  |  |
| 8 | FAI-PFC-14.16.5.4 | Elaborar requisitos não funcionais | 2d | 2018-02-19 A | 2018-02-20 |  | 6% | 1.88d |  | 2018-02-28 | 2018-03-01 | 1d | 2014-03-06 | 2014-03-06 | 0.12d | 0d | finish no earlier than 2018-02-20 | Jéssica | 16h | 1h | Não | Não |
| 9 | FAI-PFC-14.16.5.5 | Revisar requisitos não funcionais | 2d | 2018-02-21 A | 2018-02-22 | 8 | 6% | 1.88d |  | 2018-03-01 | 2018-03-02 | 1d | 2014-03-07 | 2014-03-07 | 0.25d | 0.12d | finish no earlier than 2018-02-22 | Jéssica | 16h | 1h | Não | Não |
| 10 | FAI-PFC-14.16.5.6 | Alterar requisitos não funcionais | 1.88d | 2018-02-23 A | 2018-02-26 | 9 | 7% | 1.75d |  | 2018-03-02 | 2018-03-05 | 1d | 2014-03-10 | 2014-03-10 | 0d |  | finish no earlier than 2018-02-26 | Jéssica | 15h | 1h | Sim | Sim |
| 11 | FAI-PFC-14.17 | **Modelagem** | 7d | 2018-02-26 | 2018-03-07 | 10 | 33% | 4.7d | 2018-02-27 | 2018-03-05 | 2018-03-08 | 3d | 2014-03-11 | 2014-03-13 |  |  |  |  | 60h | 21h |  |  |
| 12 | FAI-PFC-14.17.10 | **Casos de Uso** | 7d | 2018-02-26 | 2018-03-07 |  | 47% | 3.72d | 2018-02-28 |  |  |  |  |  |  |  |  |  | 32h | 15h |  |  |
| 13 | FAI-PFC-14.17.10.7 | Criar diagrama dos Casos de Uso | 2d | 2018-02-28 A | 2018-03-01 | 10 | 38% | 1.25d |  | 2018-03-05 | 2018-03-06 | 1d | 2014-03-11 | 2014-03-11 | 186d |  | finish no earlier than 2018-03-01 | Marcos H | 16h | 6h | Não | Não |
| 14 | FAI-PFC-14.17.10.8 | Revisar diagrama dos Casos de Uso | 1d | 2018-03-05 A | 2018-03-06 A | 13 | 100% |  |  |  |  |  |  |  |  |  | start no earlier than 2018-03-05 | Marcos H | 8h | 8h | Sim | Sim |
| 15 | FAI-PFC-14.17.10.9 | Alterar diagrama dos Casos de Uso | 1d | 2018-03-06 A | 2018-03-07 | 14 | 13% | 0.88d |  |  |  |  |  |  | 0d |  |  | Marcos H | 8h | 1h | Sim | Sim |
| 16 | FAI-PFC-14.17.11 | **MER** | 7d | 2018-02-26 | 2018-03-07 |  | 19% | 5.69d | 2018-02-27 | 2018-03-08 | 2018-03-13 | 3d | 2014-03-14 | 2014-03-18 |  |  |  |  | 28h | 6h |  |  |
| 17 | FAI-PFC-14.17.11.19 | Criar Modelo Entidade-Relacionamento | 2d | 2018-02-27 A | 2018-02-28 | 10 | 19% | 1.62d |  | 2018-03-08 | 2018-03-09 | 1d | 2014-03-14 | 2014-03-14 | 0.38d | 0.12d |  | Diego | 12h | 3h | Não | Não |
| 18 | FAI-PFC-14.17.11.20 | Revisar Modelo Entidade-Relacionamento | 1d | 2018-03-01 A | 2018-03-02 | 17 | 25% | 0.75d |  | 2018-03-09 | 2018-03-12 | 1d | 2014-03-17 | 2014-03-17 | 0.12d | 0d | start no earlier than 2018-03-01 | Diego | 8h | 2h | Não | Não |
| 19 | FAI-PFC-14.17.11.21 | Alterar Modelo Entidade-Relacionamento | 1d | 2018-03-02 A | 2018-03-05 | 18 | 13% | 0.88d |  | 2018-03-12 | 2018-03-13 | 1d | 2014-03-18 | 2014-03-18 | 184.88d |  | start no earlier than 2018-02-05 | Diego | 8h | 1h | Não | Não |
| 20 | FAI-PFC-14.18 | **Documentação** | 12d | 2018-03-07 A | 2018-03-23 |  | 87% | 1.55d |  |  |  |  |  |  |  |  |  |  | 145h | 132h |  |  |
| 21 | FAI-PFC-14.18.21 | **Capítulo 1** | 10d | 2018-03-07 A | 2018-03-21 |  | 63% | 3.73d |  | 2018-03-13 | 2018-03-16 | 3d | 2014-03-19 | 2014-03-21 |  |  |  |  | 32h | 21h |  |  |
| 22 | FAI-PFC-14.18.21.31 | Elaborar Capítulo 1 | 2d | 2018-03-07 A | 2018-03-09 |  | 94% | 0.12d |  | 2018-03-13 | 2018-03-14 | 1d | 2014-03-19 | 2014-03-19 | 2d | 0d |  | Jéssica | 16h | 15h | Não | Não |
| 23 | FAI-PFC-14.18.21.32 | Revisar Capítulo 1 | 2.38d | 2018-03-09 A | 2018-03-13 | 22 | 84% | 0.38d |  | 2018-03-14 | 2018-03-15 | 1d | 2014-03-20 | 2014-03-20 | 0d |  |  | Marcos H | 8h | 5h | Sim | Sim |
| 24 | FAI-PFC-14.18.21.33 | Alterar Capítulo 1 | 2d | 2018-03-13 A | 2018-03-15 | 23 | 6% | 1.88d |  | 2018-03-15 | 2018-03-16 | 1d | 2014-03-21 | 2014-03-21 | 4d |  |  | Jéssica | 8h | 1h | Não | Não |

Notes:
- 3: Criação dos requisitos funcionais do projeto.
- 7: Criação dos requisitos não funcionais do projeto.
- 16: Descrição do pacote de trabalho
- 21: Criação capitulo 1

| ID | WBS | Task | Duration | Start | Finish | Predecessors | Complete | Remaining | Actual finish | Baseline start | Baseline finish | Baseline duration | Baseline 1 start | Baseline 1 finish | Total slack | Free slack | Constraint | Resources | Work | Actual work | Critical? | Text3 |
| --- | --- | --- | --- | --- | --- | --- | --- | --- | --- | --- | --- | --- | --- | --- | --- | --- | --- | --- | --- | --- | --- | --- |
| 25 | FAI-PFC-14.18.22 | **Capítulo 2** | 10d | 2018-03-07 A | 2018-03-21 |  | 97% | 0.31d |  | 2018-03-13 | 2018-03-16 | 3d | 2014-03-19 | 2014-03-21 |  |  |  |  | 32h | 31h |  |  |
| 26 | FAI-PFC-14.18.22.31 | Elaborar Capítulo 2 | 2d | 2018-03-07 A | 2018-03-09 A |  | 100% |  |  | 2018-03-13 | 2018-03-14 | 1d | 2014-03-19 | 2014-03-19 |  |  |  | Jéssica | 16h | 16h | Sim | Sim |
| 27 | FAI-PFC-14.18.22.32 | Revisar Capítulo 2 | 1d | 2018-03-12 A | 2018-03-13 | 26 | 88% | 0.12d |  | 2018-03-14 | 2018-03-15 | 1d | 2014-03-20 | 2014-03-20 | 178.88d |  | start no earlier than 2018-03-12 | Marcos H | 8h | 7h | Não | Não |
| 28 | FAI-PFC-14.18.22.33 | Alterar Capítulo 2 | 1d | 2018-03-15 A | 2018-03-16 A | 27 | 100% |  |  | 2018-03-15 | 2018-03-16 | 1d | 2014-03-21 | 2014-03-21 |  |  | start no earlier than 2018-03-15 | Jéssica | 8h | 8h | Sim | Sim |
| 29 | FAI-PFC-14.18.23 | **Capítulo 3** | 10d | 2018-03-07 A | 2018-03-21 |  | 97% | 0.31d |  | 2018-03-13 | 2018-03-16 | 3d | 2014-03-19 | 2014-03-21 |  |  |  |  | 33h | 32h |  |  |
| 30 | FAI-PFC-14.18.23.31 | Elaborar Capítulo 3 | 2d | 2018-03-07 A | 2018-03-09 A |  | 100% |  |  | 2018-03-13 | 2018-03-14 | 1d | 2014-03-19 | 2014-03-19 |  |  |  | Jéssica | 17h | 17h | Sim | Sim |
| 31 | FAI-PFC-14.18.23.32 | Revisar Capítulo 3 | 1d | 2018-03-12 A | 2018-03-13 | 30 | 88% | 0.12d |  | 2018-03-14 | 2018-03-15 | 1d | 2014-03-20 | 2014-03-20 | 178.88d |  | start no earlier than 2018-03-12 | Marcos H | 8h | 7h | Não | Não |
| 32 | FAI-PFC-14.18.23.33 | Alterar Capítulo 3 | 1d | 2018-03-14 A | 2018-03-15 A | 31 | 100% |  |  | 2018-03-15 | 2018-03-16 | 1d | 2014-03-21 | 2014-03-21 |  |  | start no earlier than 2018-03-14 | Jéssica | 8h | 8h | Sim | Sim |
| 33 | FAI-PFC-14.18.24 | **Capítulo 4** | 10d | 2018-03-07 A | 2018-03-21 |  | 100% |  | 2018-03-15 | 2018-03-13 | 2018-03-16 | 3d | 2014-03-19 | 2014-03-21 |  |  |  |  | 24h | 24h |  |  |
| 34 | FAI-PFC-14.18.24.31 | Elaborar Capítulo 4 | 1d | 2018-03-07 A | 2018-03-08 A |  | 100% |  |  | 2018-03-13 | 2018-03-14 | 1d | 2014-03-19 | 2014-03-19 |  |  |  | Jéssica | 8h | 8h | Sim | Sim |
| 35 | FAI-PFC-14.18.24.32 | Revisar Capítulo 4 | 1d | 2018-03-12 A | 2018-03-13 A | 34 | 100% |  |  | 2018-03-14 | 2018-03-15 | 1d | 2014-03-20 | 2014-03-20 |  |  | start no earlier than 2018-03-12 | Marcos H | 8h | 8h | Sim | Sim |
| 36 | FAI-PFC-14.18.24.33 | Alterar Capítulo 4 | 1d | 2018-03-14 A | 2018-03-15 A | 35 | 100% |  |  | 2018-03-15 | 2018-03-16 | 1d | 2014-03-21 | 2014-03-21 |  |  | start no earlier than 2018-03-14 | Jéssica | 8h | 8h | Sim | Sim |
| 37 | FAI-PFC-14.18.25 | **Capítulo 5** | 10d | 2018-03-07 A | 2018-03-21 |  | 100% |  | 2018-03-15 | 2018-03-13 | 2018-03-16 | 3d | 2014-03-19 | 2014-03-21 |  |  |  |  | 24h | 24h |  |  |
| 38 | FAI-PFC-14.18.25.29 | Elaborar Capítulo 5 | 1d | 2018-03-07 A | 2018-03-08 A |  | 100% |  |  | 2018-03-13 | 2018-03-14 | 1d | 2014-03-19 | 2014-03-19 |  |  |  | Jéssica | 8h | 8h | Sim | Sim |
| 39 | FAI-PFC-14.18.25.30 | Revisar Capítulo 5 | 1d | 2018-03-12 A | 2018-03-13 A | 38 | 100% |  |  | 2018-03-14 | 2018-03-15 | 1d | 2014-03-20 | 2014-03-20 |  |  | start no earlier than 2018-03-12 | Marcos H | 8h | 8h | Sim | Sim |
| 40 | FAI-PFC-14.18.25.31 | Alterar Capítulo 5 | 1d | 2018-03-14 A | 2018-03-15 A | 39 | 100% |  |  | 2018-03-15 | 2018-03-16 | 1d | 2014-03-21 | 2014-03-21 |  |  | start no earlier than 2018-03-14 | Jéssica | 8h | 8h | Sim | Sim |
| 41 | FAI-PFC-14.19 | **Construção** | 20d | 2018-03-12 A | 2018-04-07 | 2 | 72% | 5.7d |  |  |  |  |  |  |  |  |  |  | 87h | 77h |  |  |
| 42 | FAI-PFC-14.19.15 | **Banco de Dados** | 5d | 2018-03-12 A | 2018-03-19 A | 2 | 100% |  |  | 2018-03-13 | 2018-03-16 | 3d | 2014-03-19 | 2014-03-21 |  |  |  |  | 32h | 32h |  |  |
| 43 | FAI-PFC-14.19.15.34 | Criar Banco de Dados | 2d | 2018-03-12 A | 2018-03-14 A |  | 100% |  |  | 2018-03-13 | 2018-03-14 | 1d | 2014-03-19 | 2014-03-19 |  |  |  | Marcos P | 16h | 16h | Sim | Sim |
| 44 | FAI-PFC-14.19.15.35 | Revisar Banco de Dados | 1d | 2018-03-14 A | 2018-03-15 A | 43 | 100% |  |  | 2018-03-14 | 2018-03-15 | 1d | 2014-03-20 | 2014-03-20 |  |  |  | Marcos P | 8h | 8h | Sim | Sim |
| 45 | FAI-PFC-14.19.15.36 | Alterar Banco de Dados | 1d | 2018-03-16 A | 2018-03-19 A | 44 | 100% |  |  | 2018-03-15 | 2018-03-16 | 1d | 2014-03-21 | 2014-03-21 |  |  | start no earlier than 2018-03-16 | Marcos P | 8h | 8h | Sim | Sim |
| 46 | FAI-PFC-14.19.16 | **Código Front-End** | 14d | 2018-03-20 A | 2018-04-07 | 42 | 44% | 7.88d |  | 2018-03-13 | 2018-03-16 | 3d | 2014-03-19 | 2014-03-21 |  |  |  |  | 31h | 26h |  |  |
| 47 | FAI-PFC-14.19.16.34 | Codificar Front-End | 6d | 2018-03-20 A | 2018-03-28 | 42 | 31% | 4.12d |  | 2018-03-13 | 2018-03-14 | 1d | 2014-03-19 | 2014-03-19 | 0.38d | 0d |  | Marcos P | 18h | 15h | Não | Não |
| 48 | FAI-PFC-14.19.16.35 | Revisar código Front-End | 3d | 2018-03-28 A | 2018-04-02 | 47 | 13% | 2.62d |  | 2018-03-14 | 2018-03-15 | 1d | 2014-03-20 | 2014-03-20 | 5d |  |  | Marcos P | 5h | 3h | Não | Não |
| 49 | FAI-PFC-14.19.16.36 | Alterar código Front-End | 3d | 2018-04-03 A | 2018-04-06 A | 48 | 100% |  |  | 2018-03-15 | 2018-03-16 | 1d | 2014-03-21 | 2014-03-21 |  |  | finish no earlier than 2018-04-05 | Marcos P | 8h | 8h | Sim | Sim |

Notes:
- 25: Criação capitulo 2
- 29: Criação capitulo 3
- 33: Criação capitulo 4
- 37: Criação capitulo 5
- 42: Criação do Banco de Dados do projeto.
- 46: Codificação Front-End do projeto.

| ID | WBS | Task | Type | Duration | Start | Finish | Predecessors | Complete | Remaining | Actual start | Actual finish | Baseline start | Baseline finish | Baseline duration | Baseline 1 start | Baseline 1 finish | Total slack | Constraint | Resources | Work | Actual work | Critical? | Text3 |
| --- | --- | --- | --- | --- | --- | --- | --- | --- | --- | --- | --- | --- | --- | --- | --- | --- | --- | --- | --- | --- | --- | --- | --- |
| 50 | FAI-PFC-14.19.17 | **Código Back-End** |  | 14d | 2018-03-20 A | 2018-04-07 | 42 | 86% | 1.94d |  |  | 2018-03-13 | 2018-03-16 | 3d | 2014-03-19 | 2014-03-21 |  |  |  | 24h | 19h |  |  |
| 51 | FAI-PFC-14.19.17.31 | Criar código Back-End |  | 6d | 2018-03-20 A | 2018-03-28 | 42 | 65% | 2.08d |  |  | 2018-03-13 | 2018-03-14 | 1d | 2014-03-19 | 2014-03-19 | 8d |  | Marcos P | 20h | 15h | Não | Não |
| 52 | FAI-PFC-14.19.17.32 | Revisar código Back-End |  | 5d | 2018-03-21 A | 2018-03-28 A | 51 | 100% |  |  |  | 2018-03-14 | 2018-03-15 | 1d | 2014-03-20 | 2014-03-20 |  |  | Marcos P | 3h | 3h | Sim | Sim |
| 53 | FAI-PFC-14.19.17.33 | Alterar código Back-End |  | 4d | 2018-03-22 A | 2018-03-28 A | 52 | 100% |  |  |  | 2018-03-15 | 2018-03-16 | 1d | 2014-03-21 | 2014-03-21 |  |  | Marcos P | 1h | 1h | Sim | Sim |
| 54 | FAI-PFC-4 | Fase I - Término | milestone | 0d | 2018-04-07 A | 2018-04-07 A |  | 100% |  |  |  | 2018-04-07 | 2018-04-07 | 0d | 2014-04-09 | 2014-04-09 |  | start no earlier than 2018-04-07 |  |  |  | Sim | Sim |
| 55 | FAI-PFC-6 | **FASE 2** |  | 58d | 2018-04-12 | 2018-06-30 | 54 | 78% | 13.02d | 2018-04-03 |  | 2018-04-07 | 2018-06-30 | 62d | 2014-03-03 | 2014-04-09 |  |  |  | 523h | 508h |  |  |
| 56 | 4 | **Documentação** |  | 35d | 2018-04-12 | 2018-05-30 | 54 | 92% | 2.79d | 2018-04-13 |  | 2018-04-07 | 2018-04-19 | 9d | 2014-03-03 | 2014-03-13 |  |  |  | 82h | 76h |  |  |
| 57 | 4.4 | **Correção Fase 1** |  | 10d | 2018-04-13 A | 2018-04-27 | 54 | 100% |  |  | 2018-04-25 | 2018-04-07 | 2018-04-11 | 3d | 2014-03-03 | 2014-03-05 |  |  |  | 48h | 48h |  |  |
| 58 | 4.4.4 | Corrigir texto do Capítulo 1 |  | 2d | 2018-04-13 A | 2018-04-17 A | 54 | 100% |  |  |  | 2018-04-07 | 2018-04-09 | 1d | 2014-03-03 | 2014-03-04 |  |  | Jéssica | 10h | 10h | Sim | Sim |
| 59 | 4.4.5 | Corrigir texto do Capítulo 2 |  | 1.25d | 2018-04-18 A | 2018-04-19 A |  | 100% |  |  |  | 2018-04-09 | 2018-04-10 | 1d | 2014-03-04 | 2014-03-04 |  | start no earlier than 2018-04-18 | Jéssica | 10h | 10h | Sim | Sim |
| 60 | 3.1.1.3 | Corrigir texto do Capítulo 3 |  | 1d | 2018-04-19 A | 2018-04-20 A | 59 | 100% |  |  |  | 2018-04-10 | 2018-04-11 | 1d | 2014-03-05 | 2014-03-05 |  |  | Jéssica | 6h | 6h | Sim | Sim |
| 61 | 3.1.1.4 | Corrigir texto do Capítulo 4 |  | 1d | 2018-04-20 A | 2018-04-23 A | 60 | 100% |  |  |  | 2018-04-10 | 2018-04-11 | 1d | 2014-03-05 | 2014-03-05 |  |  | Jéssica | 6h | 6h | Sim | Sim |
| 62 | 4.4.6 | Corrigir texto do Capítulo 5 |  | 2d | 2018-04-23 A | 2018-04-25 A | 61 | 100% |  |  |  | 2018-04-10 | 2018-04-11 | 1d | 2014-03-05 | 2014-03-05 |  |  | Jéssica | 16h | 16h | Sim | Sim |
| 63 | 3.1.2 | **Gerência de Projetos** |  | 5d | 2018-04-30 A | 2018-05-07 | 57 | 71% | 1.46d |  |  | 2018-04-11 | 2018-04-16 | 3d | 2014-03-06 | 2014-03-10 |  |  |  | 22h | 17h |  |  |
| 64 | 3.1.2.1 | Criar Gestão dos Riscos |  | 1d | 2018-04-30 A | 2018-05-01 |  | 63% | 0.38d |  |  | 2018-04-11 | 2018-04-12 | 1d | 2014-03-06 | 2014-03-06 | 4d |  | Jéssica | 6h | 5h | Não | Não |
| 65 | 3.1.2.2 | Criar Gestão da Qualidade |  | 1d | 2018-05-01 A | 2018-05-02 |  | 50% | 0.5d |  |  | 2018-04-12 | 2018-04-13 | 1d | 2014-03-07 | 2014-03-07 | 3d |  | Jéssica | 8h | 4h | Não | Não |
| 66 | 3.1.2.3 | Criar Gestão da Integração |  | 1d | 2018-05-02 A | 2018-05-03 A |  | 100% |  |  |  | 2018-04-13 | 2018-04-16 | 1d | 2014-03-10 | 2014-03-10 |  |  | Jéssica | 8h | 8h | Sim | Sim |
| 67 | 4.6 | **Especificação e Análise dos Requisitos** |  | 1d | 2018-05-08 A | 2018-05-09 | 63 | 50% | 0.5d |  |  | 2018-04-16 | 2018-04-19 | 3d | 2014-03-11 | 2014-03-13 |  |  |  | 5h | 4h |  |  |
| 68 | 4.6.4 | Criar Métricas para Estimativa do Esforço |  | 1d | 2018-05-08 A | 2018-05-09 |  | 50% | 0.5d |  |  | 2018-04-16 | 2018-04-17 | 1d | 2014-03-11 | 2014-03-11 | 0d |  | Jéssica | 5h | 4h | Sim | Sim |
| 69 | 3.1.4 | **Revisão do documento** |  | 6d | 2018-05-10 | 2018-05-17 | 67 | 100% |  | 2018-05-08 | 2018-05-15 | 2018-04-19 | 2018-04-24 | 3d | 2014-03-14 | 2014-03-18 |  |  |  | 7h | 7h |  |  |
| 70 | 3.1.4.1 | Revisar documento |  | 5d | 2018-05-08 A | 2018-05-13 A |  | 100% |  |  |  | 2018-04-19 | 2018-04-20 | 1d | 2014-03-14 | 2014-03-14 |  | finish no earlier than 2018-05-13 | Marcos H | 5h | 5h | Sim | Sim |
| 71 | 3.1.4.2 | Alterar documento |  | 1d | 2018-05-14 A | 2018-05-15 A |  | 100% |  |  |  | 2018-04-20 | 2018-04-23 | 1d | 2014-03-17 | 2014-03-17 |  | start no earlier than 2018-05-14 | Marcos H | 2h | 2h | Sim | Sim |
| 72 | FAI-PFC-6.5 | **Modelagem** |  | 41d | 2018-04-25 | 2018-06-20 | 54 | 100% |  | 2018-04-27 | 2018-05-07 | 2018-04-19 | 2018-05-02 | 9d | 2014-03-14 | 2014-03-26 |  |  |  | 35h | 35h |  |  |
| 73 | FAI-PFC-6.5.5 | **Correção dos Casos de Uso** |  | 3d | 2018-04-27 A | 2018-05-02 A |  | 100% |  |  |  | 2018-04-24 | 2018-04-27 | 3d | 2014-03-19 | 2014-03-21 |  |  |  | 6h | 6h |  |  |
| 74 | FAI-PFC-6.5.5.4 | Corrigir Casos de Uso |  | 1d | 2018-04-27 A | 2018-04-30 A |  | 100% |  |  |  | 2018-04-24 | 2018-04-25 | 1d | 2014-03-19 | 2014-03-19 |  |  | Marcos H | 3h | 3h | Sim | Sim |
| 75 | FAI-PFC-6.5.5.5 | Revisar correção de Casos de Uso |  | 1d | 2018-04-30 A | 2018-05-01 A | 74 | 100% |  |  |  | 2018-04-25 | 2018-04-26 | 1d | 2014-03-20 | 2014-03-20 |  |  | Marcos H | 2h | 2h | Sim | Sim |
| 76 | FAI-PFC-6.5.5.6 | Alterar correção dos Casos de Uso |  | 1d | 2018-05-01 A | 2018-05-02 A | 75 | 100% |  |  |  | 2018-04-26 | 2018-04-27 | 1d | 2014-03-21 | 2014-03-21 |  |  | Marcos H | 1h | 1h | Sim | Sim |

Notes:
- 50: Codificação Back-End do projeto.
- 57: Correção da documentação Fase 1.
- 63: Criação das gestões de gerência do projeto.
- 67: Complementação do Capítulo 5 do projeto.
- 69: Revisão do documento do projeto.
- 73: Correção dos Casos de Uso do projeto.

| ID | WBS | Task | Duration | Start | Finish | Predecessors | Complete | Remaining | Actual start | Actual finish | Baseline start | Baseline finish | Baseline duration | Baseline 1 start | Baseline 1 finish | Total slack | Constraint | Resources | Work | Actual work | Critical? | Text3 |
| --- | --- | --- | --- | --- | --- | --- | --- | --- | --- | --- | --- | --- | --- | --- | --- | --- | --- | --- | --- | --- | --- | --- |
| 77 | FAI-PFC-6.5.6 | **Correção do MER** | 3d | 2018-04-27 A | 2018-05-02 A | 57 | 100% |  |  |  | 2018-04-27 | 2018-05-02 | 3d | 2014-03-24 | 2014-03-26 |  |  |  | 6h | 6h |  |  |
| 78 | FAI-PFC-6.5.6.4 | Corrigir MER | 1d | 2018-04-27 A | 2018-04-30 A |  | 100% |  |  |  | 2018-04-27 | 2018-04-30 | 1d | 2014-03-24 | 2014-03-24 |  |  | Diego | 4h | 4h | Sim | Sim |
| 79 | FAI-PFC-6.5.6.5 | Revisar correção do MER | 1d | 2018-04-30 A | 2018-05-01 A | 78 | 100% |  |  |  | 2018-04-30 | 2018-05-01 | 1d | 2014-03-25 | 2014-03-25 |  |  | Diego | 1h | 1h | Sim | Sim |
| 80 | FAI-PFC-6.5.6.6 | Alterar correção do MER | 1d | 2018-05-01 A | 2018-05-02 A | 79 | 100% |  |  |  | 2018-05-01 | 2018-05-02 | 1d | 2014-03-26 | 2014-03-26 |  |  | Diego | 1h | 1h | Sim | Sim |
| 81 | 3.2.3 | **Visão Estrutural** | 3d | 2018-04-27 A | 2018-05-02 A | 57 | 100% |  |  |  | 2018-04-27 | 2018-05-02 | 3d | 2014-03-24 | 2014-03-26 |  |  |  | 7h | 7h |  |  |
| 82 | 3.2.3.1 | Criar Diagrama de Pacotes | 1d | 2018-04-27 A | 2018-04-30 A |  | 100% |  |  |  | 2018-04-27 | 2018-04-30 | 1d | 2014-03-24 | 2014-03-24 |  |  | Diego | 3h | 3h | Sim | Sim |
| 83 | 3.2.3.2 | Criar Diagrama de Classes | 1d | 2018-04-30 A | 2018-05-01 A | 82 | 100% |  |  |  | 2018-04-30 | 2018-05-01 | 1d | 2014-03-25 | 2014-03-25 |  |  | Diego | 1h | 1h | Sim | Sim |
| 84 | 3.2.3.3 | Criar Diagrama de Objetos | 1d | 2018-05-01 A | 2018-05-02 A | 83 | 100% |  |  |  | 2018-05-01 | 2018-05-02 | 1d | 2014-03-26 | 2014-03-26 |  |  | Diego | 3h | 3h | Sim | Sim |
| 85 | 3.2.4 | **Visão Comportamental** | 3d | 2018-05-02 A | 2018-05-07 | 57 | 100% |  |  | 2018-05-04 | 2018-04-27 | 2018-05-02 | 3d | 2014-03-24 | 2014-03-26 |  |  |  | 6h | 6h |  |  |
| 86 | 3.2.4.1 | Criar Projeto das Interações | 1d | 2018-05-02 A | 2018-05-03 A |  | 100% |  |  |  | 2018-04-27 | 2018-04-30 | 1d | 2014-03-24 | 2014-03-24 |  |  | Diego | 3h | 3h | Sim | Sim |
| 87 | 3.2.4.2 | Criar Diagrama de Atividades | 1.25d | 2018-05-03 A | 2018-05-04 A | 86 | 100% |  |  |  | 2018-04-30 | 2018-05-01 | 1d | 2014-03-25 | 2014-03-25 |  |  | Diego | 3h | 3h | Sim | Sim |
| 88 | 3.2.5 | **Visão dos Dados** | 1d | 2018-05-04 | 2018-05-07 | 57 | 100% |  | 2018-04-27 | 2018-05-01 | 2018-04-27 | 2018-05-02 | 3d | 2014-03-24 | 2014-03-26 |  |  |  | 4h | 4h |  |  |
| 89 | 3.2.5.1 | Criar Modelo Operacional | 1d | 2018-04-27 A | 2018-04-30 A |  | 100% |  |  |  | 2018-04-27 | 2018-04-30 | 1d | 2014-03-24 | 2014-03-24 |  |  | Diego | 2h | 2h | Sim | Sim |
| 90 | 3.2.5.2 | Criar Dicionário de Dados do Modelo Operacional | 1.12d | 2018-04-30 A | 2018-05-01 A | 89 | 100% |  |  |  | 2018-04-30 | 2018-05-01 | 1d | 2014-03-25 | 2014-03-25 |  |  | Diego | 2h | 2h | Sim | Sim |
| 91 | 3.2.6 | **Projeto de Sistemas Distribuídos** | 4d | 2018-05-02 A | 2018-05-07 A |  | 100% |  |  |  | 2018-04-27 | 2018-05-02 | 3d | 2014-03-24 | 2014-03-26 |  |  |  | 6h | 6h |  |  |
| 92 | 3.2.6.1 | Criar Procedimentos para Tratamento dos Desafios | 1d | 2018-05-02 A | 2018-05-03 A |  | 100% |  |  |  | 2018-04-27 | 2018-04-30 | 1d | 2014-03-24 | 2014-03-24 |  |  | Diego | 3h | 3h | Sim | Sim |
| 93 | 3.2.6.2 | Descrever tecnologias e Arquiteturas de Distribuição | 1.25d | 2018-05-04 A | 2018-05-07 A | 92 | 100% |  |  |  | 2018-04-30 | 2018-05-01 | 1d | 2014-03-25 | 2014-03-25 |  |  | Diego | 3h | 3h | Sim | Sim |
| 94 | FAI-PFC-6.6 | **Construção** | 47d | 2018-04-27 | 2018-06-30 |  | 73% | 12.66d | 2018-04-03 |  | 2018-05-02 | 2018-05-15 | 9d | 2014-03-27 | 2014-04-09 |  |  |  | 406h | 397h |  |  |
| 95 | FAI-PFC-6.6.4 | **Correção do Banco de Dados** | 4d | 2018-04-27 A | 2018-05-02 |  | 100% |  |  | 2018-05-01 | 2018-05-02 | 2018-05-07 | 3d | 2014-03-27 | 2014-03-31 |  |  |  | 6h | 6h |  |  |
| 96 | 6.4.4 | Corrigir Banco de Dados | 2d | 2018-04-27 A | 2018-05-01 A |  | 100% |  |  |  | 2018-05-02 | 2018-05-03 | 1d | 2014-03-27 | 2014-03-27 |  | finish no earlier than 2014-03-27 | Marcos H | 3h | 3h | Sim | Sim |
| 97 | 6.4.5 | Revisar correção do Banco de Dados | 2d | 2018-04-27 A | 2018-05-01 A | 96 | 100% |  |  |  | 2018-05-03 | 2018-05-04 | 1d | 2014-03-28 | 2014-03-28 |  | start no earlier than 2014-03-28 | Marcos H | 2h | 2h | Sim | Sim |
| 98 | 6.4.6 | Alterar correção do Banco de Dados | 2.12d | 2018-04-27 A | 2018-05-01 A | 97 | 100% |  |  |  | 2018-05-04 | 2018-05-07 | 1d | 2014-03-31 | 2014-03-31 |  | start no earlier than 2014-03-31 | Marcos H | 1h | 1h | Sim | Sim |
| 99 | FAI-PFC-6.6.5 | **Código Front-End** | 67d | 2018-04-02 | 2018-06-30 | 95 | 60% | 26.83d | 2018-04-03 |  | 2018-05-07 | 2018-05-10 | 3d | 2014-04-01 | 2014-04-03 |  |  |  | 200h | 195h |  |  |
| 100 | 6.5.4 | Codificar Front-End | 40d | 2018-04-03 A | 2018-05-25 |  | 36% | 25.62d |  |  | 2018-05-07 | 2018-05-08 | 1d | 2014-04-01 | 2014-04-01 | 123.88d | start no earlier than 2018-04-02 | Marcos P | 120h | 115h | Não | Não |
| 101 | 6.5.5 | Revisar código Front-End | 7d | 2018-05-25 A | 2018-06-05 A | 100 | 100% |  |  |  | 2018-05-08 | 2018-05-09 | 1d | 2014-04-02 | 2014-04-02 |  | finish no earlier than 2014-04-02 | Marcos P | 40h | 40h | Sim | Sim |
| 102 | 6.5.6 | Alterar código Front-End | 17d | 2018-06-05 A | 2018-06-28 A | 101 | 100% |  |  |  | 2018-05-09 | 2018-05-10 | 1d | 2014-04-03 | 2014-04-03 |  | finish no earlier than 2014-04-03 | Marcos P | 40h | 40h | Sim | Sim |

Notes:
- 77: Correção do MER do projeto.
- 81: Criação da Visão Estrutural do projeto.
- 85: Criação da Visão Comportamental do projeto.
- 88: Criação da Visão dos Dados do projeto.
- 91: Criação do Projeto de Sistemas Distribuídos do projeto.
- 95: Correção do Banco de Dados do projeto.
- 99: Codificação Front-End do projeto.

| ID | WBS | Task | Type | Duration | Start | Finish | Predecessors | Complete | Remaining | Actual start | Actual finish | Baseline start | Baseline finish | Baseline duration | Baseline 1 start | Baseline 1 finish | Total slack | Constraint | Resources | Work | Actual work | Critical? | Text3 | Responsável |
| --- | --- | --- | --- | --- | --- | --- | --- | --- | --- | --- | --- | --- | --- | --- | --- | --- | --- | --- | --- | --- | --- | --- | --- | --- |
| 103 | FAI-PFC-6.6.6 | **Código Back-End** |  | 67d | 2018-04-02 | 2018-06-30 |  | 84% | 10.99d | 2018-04-03 |  | 2018-05-10 | 2018-05-15 | 3d | 2014-04-04 | 2014-04-08 |  |  |  | 200h | 196h |  |  |  |
| 104 | 6.6.4 | Criar código Back-End |  | 40d | 2018-04-03 A | 2018-05-25 |  | 74% | 10.5d |  |  | 2018-05-10 | 2018-05-11 | 1d | 2014-04-04 | 2014-04-04 | 123.88d | start no earlier than 2018-04-03 | Marcos P | 120h | 116h | Não | Não |  |
| 105 | 6.6.5 | Revisar código Back-End |  | 7d | 2018-05-29 A | 2018-06-07 A |  | 100% |  |  |  | 2018-05-11 | 2018-05-14 | 1d | 2014-04-07 | 2014-04-07 |  | start no earlier than 2018-05-29 | Marcos P | 40h | 40h | Sim | Sim |  |
| 106 | 6.6.6 | Alterar código Back-End |  | 17d | 2018-06-07 A | 2018-06-30 A | 105 | 100% |  |  |  | 2018-05-14 | 2018-05-15 | 1d | 2014-04-08 | 2014-04-08 |  |  | Marcos P | 40h | 40h | Sim | Sim |  |
| 107 | FAI-PFC-7 | Fase 2 - Término | milestone | 0d | 2018-06-30 | 2018-06-30 |  |  |  |  |  | 2018-06-30 | 2018-06-30 | 0d | 2014-04-09 | 2014-04-09 | 0d | start no earlier than 2018-06-30 |  |  |  | Sim | Sim |  |
| 108 | FAI-PFC-8 | **FASE 3** |  | 52d | 2018-06-30 | 2018-09-08 | 107 | 77% | 11.85d | 2018-07-02 |  | 2018-06-30 | 2018-09-08 | 52d | 2014-03-03 | 2014-04-09 |  |  |  | 882h | 668h |  |  |  |
| 109 | FAI-PFC-8.7 | **Documentação** |  | 26d | 2018-06-30 | 2018-08-06 A | 107 | 100% |  | 2018-07-02 |  | 2018-06-30 | 2018-07-12 | 9d | 2014-03-03 | 2014-03-13 |  |  |  | 82h | 82h |  |  |  |
| 110 | FAI-PFC-8.7.7 | **Correção Fase 2** |  | 7d | 2018-06-30 | 2018-07-10 | 107 | 100% |  | 2018-07-02 | 2018-07-05 | 2018-06-30 | 2018-07-04 | 3d | 2014-03-03 | 2014-03-05 |  |  |  | 14h | 14h |  |  | Name1 |
| 111 | 5.1.1.1 | Corrigir texto do Capítulo 2 | manual | 0.38d | 2018-07-02 A | 2018-07-02 A | 107 | 100% |  |  |  |  |  |  |  |  |  |  | Jéssica | 3h | 3h | Sim | Sim |  |
| 112 | FAI-PFC-8.7.7.7 | Corrigir texto do Capítulo 3 |  | 1d | 2018-07-02 A | 2018-07-03 A | 111 | 100% |  |  |  | 2018-06-30 | 2018-07-02 | 1d | 2014-03-03 | 2014-03-04 |  | start no earlier than 2018-06-04 | Jéssica | 3h | 3h | Sim | Sim |  |
| 113 | FAI-PFC-8.7.7.8 | Corrigir texto do Capítulo 4 |  | 1d | 2018-07-03 A | 2018-07-04 A | 112 | 100% |  |  |  | 2018-07-02 | 2018-07-03 | 1d | 2014-03-04 | 2014-03-04 |  | start no earlier than 2018-06-04 | Jéssica | 3h | 3h | Sim | Sim |  |
| 114 | FAI-PFC-8.7.7.9 | Corrigir texto do Capítulo 5 |  | 1d | 2018-07-04 A | 2018-07-05 A | 113 | 100% |  |  |  | 2018-07-03 | 2018-07-04 | 1d | 2014-03-05 | 2014-03-05 |  | start no earlier than 2018-06-04 | Jéssica | 2h | 2h | Sim | Sim |  |
| 115 | 5.1.1.5 | Corrigir texto do Capítulo 6 | manual | 1d | 2018-07-02 A | 2018-07-03 A | 114 | 100% |  |  |  |  |  |  |  |  |  |  | Diego | 3h | 3h | Sim | Sim |  |
| 116 | FAI-PFC-8.7.8 | **Capítulo 6** |  | 3d | 2018-07-30 A | 2018-08-02 | 115 | 100% |  |  | 2018-08-01 | 2018-07-04 | 2018-07-09 | 3d | 2014-03-06 | 2014-03-10 |  |  |  | 25h | 25h |  |  | Name2 |
| 117 | FAI-PFC-8.7.8.7 | Criar Estrutura fisica do banco de dados |  | 2d | 2018-07-30 A | 2018-08-01 A |  | 100% |  |  |  | 2018-07-04 | 2018-07-05 | 1d | 2014-03-06 | 2014-03-06 |  | start no earlier than 2018-07-30 | Diego | 8h | 8h | Sim | Sim |  |
| 118 | FAI-PFC-8.7.8.8 | Escrever sobre Design Patterns |  | 1d | 2018-07-30 A | 2018-07-31 A |  | 100% |  |  |  | 2018-07-05 | 2018-07-06 | 1d | 2014-03-07 | 2014-03-07 |  |  | Camila | 4h | 4h | Sim | Sim |  |
| 119 | FAI-PFC-8.7.8.9 | Escrever sobre Convenções e guias para a codificação |  | 1d | 2018-07-31 A | 2018-08-01 A | 118 | 100% |  |  |  | 2018-07-06 | 2018-07-09 | 1d | 2014-03-10 | 2014-03-10 |  |  | Camila | 4h | 4h | Sim | Sim |  |
| 120 | 5.1.2.4 | Escrever sobre Aspectos visuais da interface do usuário | manual | 1d | 2018-07-30 A | 2018-07-31 A |  | 100% |  |  |  |  |  |  |  |  |  |  | Jéssica | 3h | 3h | Sim | Sim |  |
| 121 | 5.1.2.5 | Escrever sobre Heuristica e usabilidade | manual | 1d | 2018-07-30 A | 2018-07-31 A | 119 | 100% |  |  |  |  |  |  |  |  |  |  | Camila | 6h | 6h | Sim | Sim |  |
| 122 | FAI-PFC-8.8.9 | **Revisão do documento** |  | 3d | 2018-08-01 A | 2018-08-06 A | 121 | 100% |  |  |  | 2018-07-20 | 2018-07-25 | 3d | 2014-03-24 | 2014-03-26 |  |  |  | 43h | 43h |  |  | Name3 |
| 123 | FAI-PFC-8.8.9.7 | Revisar documento |  | 3d | 2018-08-01 A | 2018-08-06 A | 119 | 100% |  |  |  | 2018-07-20 | 2018-07-23 | 1d | 2014-03-24 | 2014-03-24 |  |  | Camila; Diego; Jéssica | 40h | 40h | Sim | Sim |  |
| 124 | FAI-PFC-8.8.9.8 | Alterar documento |  | 1d | 2018-08-03 A | 2018-08-06 A | 123 | 100% |  |  |  | 2018-07-23 | 2018-07-24 | 1d | 2014-03-25 | 2014-03-25 |  |  | Diego; Camila; Jéssica | 3h | 3h | Sim | Sim |  |
| 125 | FAI-PFC-8.8 | **Modelagem** |  | 3d | 2018-08-03 A | 2018-08-08 |  | 100% |  |  | 2018-08-07 | 2018-07-12 | 2018-07-25 | 9d | 2014-03-14 | 2014-03-26 |  |  |  | 8h | 8h |  |  |  |
| 126 | FAI-PFC-8.8.7 | **Casos de uso** |  | 3d | 2018-08-03 A | 2018-08-08 |  | 100% |  |  | 2018-08-07 | 2018-07-12 | 2018-07-17 | 3d | 2014-03-14 | 2014-03-18 |  |  |  | 4h | 4h |  |  | Name1 |
| 127 | FAI-PFC-8.8.7.7 | Revisar Casos de uso |  | 1d | 2018-08-03 A | 2018-08-06 A |  | 100% |  |  |  | 2018-07-12 | 2018-07-13 | 1d | 2014-03-14 | 2014-03-14 |  | start no earlier than 2018-08-03 | Diego | 3h | 3h | Sim | Sim |  |
| 128 | FAI-PFC-8.8.7.8 | Alterar Casos de uso |  | 1d | 2018-08-06 A | 2018-08-07 A | 127 | 100% |  |  |  | 2018-07-13 | 2018-07-16 | 1d | 2014-03-17 | 2014-03-17 |  |  | Diego | 1h | 1h | Sim | Sim |  |

Notes:
- 103: Codificação Back-End do projeto.
- 110: Correção da documentação entregue na Fase 2.
- 116: Criar os itens restantes do Capitulo 6.
- 122: Descrição do pacote de trabalho
- 126: Revisão e acréssimo de caso de uso.

| ID | WBS | Task | Type | Duration | Start | Finish | Predecessors | Complete | Remaining | Actual start | Actual finish | Baseline start | Baseline finish | Baseline duration | Baseline 1 start | Baseline 1 finish | Total slack | Constraint | Resources | Work | Actual work | Responsável | Critical? | Text3 |
| --- | --- | --- | --- | --- | --- | --- | --- | --- | --- | --- | --- | --- | --- | --- | --- | --- | --- | --- | --- | --- | --- | --- | --- | --- |
| 129 | FAI-PFC-8.8.7 | **Correção MER** |  | 3d | 2018-08-03 A | 2018-08-08 |  | 100% |  |  | 2018-08-07 | 2018-07-12 | 2018-07-17 | 3d | 2014-03-14 | 2014-03-18 |  |  |  | 4h | 4h | Name1 |  |  |
| 130 | FAI-PFC-8.8.7.7 | Revisar Modelo Entidade Relacionamento |  | 1d | 2018-08-03 A | 2018-08-06 A |  | 100% |  |  |  | 2018-07-12 | 2018-07-13 | 1d | 2014-03-14 | 2014-03-14 |  | start no earlier than 2018-08-03 | Diego | 3h | 3h |  | Sim | Sim |
| 131 | FAI-PFC-8.8.7.8 | Alterar Modelo Entidade Relacionamento |  | 1d | 2018-08-06 A | 2018-08-07 A | 130 | 100% |  |  |  | 2018-07-13 | 2018-07-16 | 1d | 2014-03-17 | 2014-03-17 |  |  | Diego | 1h | 1h |  | Sim | Sim |
| 132 | FAI-PFC-8.9 | **Construção** |  | 52d | 2018-06-30 | 2018-09-08 | 107 | 73% | 14.05d | 2018-07-02 |  | 2018-07-25 | 2018-08-07 | 9d | 2014-03-27 | 2014-04-09 |  |  |  | 792h | 578h |  |  |  |
| 133 | FAI-PFC-8.9.7 | **Código Front-End** |  | 51d | 2018-07-02 A | 2018-09-08 | 107 | 69% | 15.87d |  |  | 2018-07-25 | 2018-07-30 | 3d | 2014-03-27 | 2014-03-31 |  |  |  | 392h | 270h | Name1 |  |  |
| 134 | FAI-PFC-8.9.7.7 | Codificar código Front-End |  | 33d | 2018-07-02 A | 2018-08-16 | 107 | 68% | 10.5d |  |  | 2018-07-25 | 2018-07-26 | 1d | 2014-03-27 | 2014-03-27 | 63.88d | start no earlier than 2018-07-02 | Marcos H | 264h | 180h |  | Não | Não |
| 135 | FAI-PFC-8.9.7.8 | Revisar código Front-End |  | 5d | 2018-08-17 A | 2018-08-24 A | 134 | 100% |  |  |  | 2018-07-26 | 2018-07-27 | 1d | 2014-03-28 | 2014-03-28 |  | start no earlier than 2018-08-17 | Marcos H | 40h | 40h |  | Sim | Sim |
| 136 | FAI-PFC-8.9.7.9 | Alterar código Front-End |  | 11d | 2018-08-27 A | 2018-09-08 | 135 | 57% | 4.75d |  |  | 2018-07-27 | 2018-07-30 | 1d | 2014-03-31 | 2014-03-31 | 46d | finish no earlier than 2018-09-08 | Marcos H | 88h | 50h |  | Não | Não |
| 137 | FAI-PFC-8.9.8 | **Código Back-End** |  | 51d | 2018-06-30 | 2018-09-08 | 107 | 77% | 11.73d | 2018-07-02 |  | 2018-07-30 | 2018-08-02 | 3d | 2014-04-01 | 2014-04-03 |  |  |  | 400h | 308h | Name2 |  |  |
| 138 | FAI-PFC-8.9.8.7 | Codificar código Back-End |  | 34d | 2018-07-02 A | 2018-08-17 | 107 | 66% | 11.5d |  |  | 2018-07-30 | 2018-07-31 | 1d | 2014-04-01 | 2014-04-01 | 62.88d | start no earlier than 2018-07-02 | Marcos P | 272h | 180h |  | Não | Não |
| 139 | FAI-PFC-8.9.8.8 | Revisar código Back-End |  | 4d | 2018-08-17 A | 2018-08-23 A | 138 | 100% |  |  |  | 2018-07-31 | 2018-08-01 | 1d | 2014-04-02 | 2014-04-02 |  | finish no earlier than 2014-04-02 | Marcos P | 32h | 32h |  | Sim | Sim |
| 140 | FAI-PFC-8.9.8.9 | Alterar código Back-End |  | 12d | 2018-08-23 A | 2018-09-08 A | 139 | 100% |  |  |  | 2018-08-01 | 2018-08-02 | 1d | 2014-04-03 | 2014-04-03 |  | finish no earlier than 2014-04-03 | Marcos P | 96h | 96h |  | Sim | Sim |
| 141 | FAI-PFC-9 | Fase 3 - Término | milestone | 0d | 2018-09-08 | 2018-09-08 |  |  |  |  |  | 2018-09-08 | 2018-09-08 | 0d | 2014-04-09 | 2014-04-09 | 46.88d | start no earlier than 2018-09-08 |  |  |  |  | Não | Não |
| 142 | FAI-PFC-10 | **FASE 4** |  | 47d | 2018-09-08 | 2018-11-10 |  |  |  |  |  | 2018-09-08 | 2018-11-10 | 47d | 2014-03-03 | 2014-04-09 |  |  |  |  |  |  |  |  |
| 143 | FAI-PFC-10.10 | **Entrega A4** |  | 1d | 2018-09-08 | 2018-09-10 |  |  |  |  |  | 2018-09-08 | 2018-09-20 | 9d | 2014-03-03 | 2014-03-13 | 45.88d |  |  |  |  |  |  |  |
| 144 | FAI-PFC-10.10.10 | **Pacote de Trabalho A4.1** |  | 1d | 2018-09-08 | 2018-09-10 |  |  |  |  |  | 2018-09-08 | 2018-09-12 | 3d | 2014-03-03 | 2014-03-05 | 45.88d |  |  |  |  | Name1 |  |  |
| 145 | FAI-PFC-10.10.10.10 | Atividade A4.1.1 |  | 1d | 2018-09-08 | 2018-09-10 |  |  |  |  |  | 2018-09-08 | 2018-09-10 | 1d | 2014-03-03 | 2014-03-04 | 45.88d |  | Camila |  |  |  | Não | Não |
| 146 | FAI-PFC-10.10.10.11 | Atividade A4.1.2 |  | 1d | 2018-09-08 | 2018-09-10 |  |  |  |  |  | 2018-09-10 | 2018-09-11 | 1d | 2014-03-04 | 2014-03-04 | 45.88d |  | Diego |  |  |  | Não | Não |
| 147 | FAI-PFC-10.10.10.12 | Atividade A4.1.3 |  | 1d | 2018-09-08 | 2018-09-10 |  |  |  |  |  | 2018-09-11 | 2018-09-12 | 1d | 2014-03-05 | 2014-03-05 | 45.88d |  | Jéssica |  |  |  | Não | Não |
| 148 | FAI-PFC-10.10.11 | **Pacote de Trabalho A4.2** |  | 1d | 2018-09-08 | 2018-09-10 |  |  |  |  |  | 2018-09-12 | 2018-09-17 | 3d | 2014-03-06 | 2014-03-10 | 45.88d |  |  |  |  | Name2 |  |  |
| 149 | FAI-PFC-10.10.11.10 | Atividade A4.2.1 |  | 1d | 2018-09-08 | 2018-09-10 |  |  |  |  |  | 2018-09-12 | 2018-09-13 | 1d | 2014-03-06 | 2014-03-06 | 45.88d |  | Camila |  |  |  | Não | Não |
| 150 | FAI-PFC-10.10.11.11 | Atividade A4.2.2 |  | 1d | 2018-09-08 | 2018-09-10 |  |  |  |  |  | 2018-09-13 | 2018-09-14 | 1d | 2014-03-07 | 2014-03-07 | 45.88d |  | Diego |  |  |  | Não | Não |
| 151 | FAI-PFC-10.10.11.12 | Atividade A4.2.3 |  | 1d | 2018-09-08 | 2018-09-10 |  |  |  |  |  | 2018-09-14 | 2018-09-17 | 1d | 2014-03-10 | 2014-03-10 | 45.88d |  | Jéssica |  |  |  | Não | Não |
| 152 | FAI-PFC-10.10.12 | **Pacote de Trabalho A4.3** |  | 1d | 2018-09-08 | 2018-09-10 |  |  |  |  |  | 2018-09-17 | 2018-09-20 | 3d | 2014-03-11 | 2014-03-13 | 45.88d |  |  |  |  | Name3 |  |  |
| 153 | FAI-PFC-10.10.12.10 | Atividade A4.3.1 |  | 1d | 2018-09-08 | 2018-09-10 |  |  |  |  |  | 2018-09-17 | 2018-09-18 | 1d | 2014-03-11 | 2014-03-11 | 45.88d |  | Camila |  |  |  | Não | Não |
| 154 | FAI-PFC-10.10.12.11 | Atividade A4.3.2 |  | 1d | 2018-09-08 | 2018-09-10 |  |  |  |  |  | 2018-09-18 | 2018-09-19 | 1d | 2014-03-12 | 2014-03-12 | 45.88d |  | Diego |  |  |  | Não | Não |
| 155 | FAI-PFC-10.10.12.12 | Atividade A4.3.3 |  | 1d | 2018-09-08 | 2018-09-10 |  |  |  |  |  | 2018-09-19 | 2018-09-20 | 1d | 2014-03-13 | 2014-03-13 | 45.88d |  | Jéssica |  |  |  | Não | Não |

Notes:
- 129: Revisão e acréssimo atributos no MER.
- 133: Codificação Front-End do sistema.
- 137: Codificação Back-End do sistema.
- 144: Descrição do pacote de trabalho
- 148: Descrição do pacote de trabalho
- 152: Descrição do pacote de trabalho

| ID | WBS | Task | Type | Duration | Start | Finish | Baseline start | Baseline finish | Baseline duration | Baseline 1 start | Baseline 1 finish | Total slack | Constraint | Resources | Responsável | Critical? | Text3 |
| --- | --- | --- | --- | --- | --- | --- | --- | --- | --- | --- | --- | --- | --- | --- | --- | --- | --- |
| 156 | FAI-PFC-10.11 | **Entrega B4** |  | 1d | 2018-09-08 | 2018-09-10 | 2018-09-20 | 2018-10-03 | 9d | 2014-03-14 | 2014-03-26 | 45.88d |  |  |  |  |  |
| 157 | FAI-PFC-10.11.10 | **Pacote de Trabalho B4.1** |  | 1d | 2018-09-08 | 2018-09-10 | 2018-09-20 | 2018-09-25 | 3d | 2014-03-14 | 2014-03-18 | 45.88d |  |  | Name1 |  |  |
| 158 | FAI-PFC-10.11.10.10 | Atividade B4.1.1 |  | 1d | 2018-09-08 | 2018-09-10 | 2018-09-20 | 2018-09-21 | 1d | 2014-03-14 | 2014-03-14 | 45.88d |  | Camila |  | Não | Não |
| 159 | FAI-PFC-10.11.10.11 | Atividade B4.1.2 |  | 1d | 2018-09-08 | 2018-09-10 | 2018-09-21 | 2018-09-24 | 1d | 2014-03-17 | 2014-03-17 | 45.88d |  | Diego |  | Não | Não |
| 160 | FAI-PFC-10.11.10.12 | Atividade B4.1.3 |  | 1d | 2018-09-08 | 2018-09-10 | 2018-09-24 | 2018-09-25 | 1d | 2014-03-18 | 2014-03-18 | 45.88d |  | Jéssica |  | Não | Não |
| 161 | FAI-PFC-10.11.11 | **Pacote de Trabalho B4.2** |  | 1d | 2018-09-08 | 2018-09-10 | 2018-09-25 | 2018-09-28 | 3d | 2014-03-19 | 2014-03-21 | 45.88d |  |  | Name2 |  |  |
| 162 | FAI-PFC-10.11.11.10 | Atividade B4.2.1 |  | 1d | 2018-09-08 | 2018-09-10 | 2018-09-25 | 2018-09-26 | 1d | 2014-03-19 | 2014-03-19 | 45.88d |  | Camila |  | Não | Não |
| 163 | FAI-PFC-10.11.11.11 | Atividade B4.2.2 |  | 1d | 2018-09-08 | 2018-09-10 | 2018-09-26 | 2018-09-27 | 1d | 2014-03-20 | 2014-03-20 | 45.88d |  | Diego |  | Não | Não |
| 164 | FAI-PFC-10.11.11.12 | Atividade B4.2.3 |  | 1d | 2018-09-08 | 2018-09-10 | 2018-09-27 | 2018-09-28 | 1d | 2014-03-21 | 2014-03-21 | 45.88d |  | Jéssica |  | Não | Não |
| 165 | FAI-PFC-10.11.12 | **Pacote de Trabalho B4.3** |  | 1d | 2018-09-08 | 2018-09-10 | 2018-09-28 | 2018-10-03 | 3d | 2014-03-24 | 2014-03-26 | 45.88d |  |  | Name3 |  |  |
| 166 | FAI-PFC-10.11.12.10 | Atividade B4.3.1 |  | 1d | 2018-09-08 | 2018-09-10 | 2018-09-28 | 2018-10-01 | 1d | 2014-03-24 | 2014-03-24 | 45.88d |  | Camila |  | Não | Não |
| 167 | FAI-PFC-10.11.12.11 | Atividade B4.3.2 |  | 1d | 2018-09-08 | 2018-09-10 | 2018-10-01 | 2018-10-02 | 1d | 2014-03-25 | 2014-03-25 | 45.88d |  | Diego |  | Não | Não |
| 168 | FAI-PFC-10.11.12.12 | Atividade B4.3.3 |  | 1d | 2018-09-08 | 2018-09-10 | 2018-10-02 | 2018-10-03 | 1d | 2014-03-26 | 2014-03-26 | 45.88d |  | Jéssica |  | Não | Não |
| 169 | FAI-PFC-10.12 | **Entrega C4** |  | 1d | 2018-09-08 | 2018-09-10 | 2018-10-03 | 2018-10-16 | 9d | 2014-03-27 | 2014-04-09 | 45.88d |  |  |  |  |  |
| 170 | FAI-PFC-10.12.10 | **Pacote de Trabalho C4.1** |  | 1d | 2018-09-08 | 2018-09-10 | 2018-10-03 | 2018-10-08 | 3d | 2014-03-27 | 2014-03-31 | 45.88d |  |  | Name1 |  |  |
| 171 | FAI-PFC-10.12.10.10 | Atividade C4.1.1 |  | 1d | 2018-09-08 | 2018-09-10 | 2018-10-03 | 2018-10-04 | 1d | 2014-03-27 | 2014-03-27 | 45.88d | finish no earlier than 2014-03-27 | Camila |  | Não | Não |
| 172 | FAI-PFC-10.12.10.11 | Atividade C4.1.2 |  | 1d | 2018-09-08 | 2018-09-10 | 2018-10-04 | 2018-10-05 | 1d | 2014-03-28 | 2014-03-28 | 45.88d | start no earlier than 2014-03-28 | Diego |  | Não | Não |
| 173 | FAI-PFC-10.12.10.12 | Atividade C4.1.3 |  | 1d | 2018-09-08 | 2018-09-10 | 2018-10-05 | 2018-10-08 | 1d | 2014-03-31 | 2014-03-31 | 45.88d | start no earlier than 2014-03-31 | Jéssica |  | Não | Não |
| 174 | FAI-PFC-10.12.11 | **Pacote de Trabalho C3.2** |  | 1d | 2018-09-08 | 2018-09-10 | 2018-10-08 | 2018-10-11 | 3d | 2014-04-01 | 2014-04-03 | 45.88d |  |  | Name2 |  |  |
| 175 | FAI-PFC-10.12.11.10 | Atividade C4.2.1 |  | 1d | 2018-09-08 | 2018-09-10 | 2018-10-08 | 2018-10-09 | 1d | 2014-04-01 | 2014-04-01 | 45.88d | finish no earlier than 2014-04-01 | Camila |  | Não | Não |
| 176 | FAI-PFC-10.12.11.11 | Atividade C4.2.1 |  | 1d | 2018-09-08 | 2018-09-10 | 2018-10-09 | 2018-10-10 | 1d | 2014-04-02 | 2014-04-02 | 45.88d | finish no earlier than 2014-04-02 | Diego |  | Não | Não |
| 177 | FAI-PFC-10.12.11.12 | Atividade C4.2.3 |  | 1d | 2018-09-08 | 2018-09-10 | 2018-10-10 | 2018-10-11 | 1d | 2014-04-03 | 2014-04-03 | 45.88d | finish no earlier than 2014-04-03 | Jéssica |  | Não | Não |
| 178 | FAI-PFC-10.12.12 | **Pacote de Trabalho C4.3** |  | 1d | 2018-09-08 | 2018-09-10 | 2018-10-11 | 2018-10-16 | 3d | 2014-04-04 | 2014-04-08 | 45.88d |  |  | Name3 |  |  |
| 179 | FAI-PFC-10.12.12.10 | Atividade C4.3.1 |  | 1d | 2018-09-08 | 2018-09-10 | 2018-10-11 | 2018-10-12 | 1d | 2014-04-04 | 2014-04-04 | 45.88d |  | Camila |  | Não | Não |
| 180 | FAI-PFC-10.12.12.11 | Atividade C4.3.2 |  | 1d | 2018-09-08 | 2018-09-10 | 2018-10-12 | 2018-10-15 | 1d | 2014-04-07 | 2014-04-07 | 45.88d |  | Diego |  | Não | Não |
| 181 | FAI-PFC-10.12.12.12 | Atividade C4.3.3 |  | 1d | 2018-09-08 | 2018-09-10 | 2018-10-15 | 2018-10-16 | 1d | 2014-04-08 | 2014-04-08 | 45.88d |  | Jéssica |  | Não | Não |
| 182 | FAI-PFC-11 | Fase 4 - Término | milestone | 0d | 2018-11-10 | 2018-11-10 | 2018-11-10 | 2018-11-10 | 0d | 2014-04-09 | 2014-04-09 | 0.88d | start no earlier than 2018-11-10 |  |  | Não | Não |
| 183 | FAI-PFC-12 | Final do PFC | milestone, manual | 0d | 2018-11-10 | 2018-11-10 | 2018-11-10 | 2018-11-10 | 0d |  |  |  |  |  |  | Não | Não |

Notes:
- 157: Descrição do pacote de trabalho
- 161: Descrição do pacote de trabalho
- 165: Descrição do pacote de trabalho
- 170: Descrição do pacote de trabalho
- 174: Descrição do pacote de trabalho
- 178: Descrição do pacote de trabalho
